# Antibot Ad Arte

Schedule from GanttProject, 2026-04-27 to 2026-05-12.
Prisma
Validazione antiBot WAF Fortinet su collaudo Ad Arte. Ticket PSN aperto subito dopo discovery in modo che la wait corra in parallelo allo sviluppo.

## Calendars

- Project calendar: Mon-Sun working.

## Resources

| Resource |
| --- |
| Dev |
| PSN |

## Schedule

| ID | WBS | Task | Duration | Start | Finish | Predecessors | Resources |
| --- | --- | --- | --- | --- | --- | --- | --- |
| 1 | 1 | Discovery e design | 2d | 2026-04-27 | 2026-04-28 |  | Dev |
| 2 | 2 | Apertura ticket PSN whitelist WAF | 1d | 2026-04-29 | 2026-04-29 | 1 | Dev |
| 3 | 3 | Wait PSN + whitelist applicata | 2d | 2026-04-30 | 2026-05-01 | 2 | PSN |
| 4 | 4 | Build core framework | 3d | 2026-04-29 | 2026-05-01 | 1 | Dev |
| 5 | 5 | **Implementazione BOT** | 4d | 2026-05-04 | 2026-05-07 | 4 |  |
| 6 | 5.1 | HTTP (BOT-1 DoS + BOT-2 ATO) | 3d | 2026-05-04 | 2026-05-06 |  | Dev |
| 7 | 5.2 | Browser (BOT-4 + BOT-5) | 4d | 2026-05-04 | 2026-05-07 |  | Dev |
| 8 | 5.3 | Admin API (BOT-3 Registration) | 3d | 2026-05-04 | 2026-05-06 |  | Dev |
| 9 | 6 | **Infrastruttura e credenziali** | 2d | 2026-05-04 | 2026-05-05 | 4 |  |
| 10 | 6.1 | Estrazione credenziali collaudo | 1d | 2026-05-04 | 2026-05-04 |  | Dev |
| 11 | 6.2 | Provisioning Linode fleet | 2d | 2026-05-05 | 2026-05-06 |  | Dev |
| 12 | 7 | Esecuzione test | 1d | 2026-05-08 | 2026-05-08 | 3, 5, 9 | Dev |
| 13 | 8 | Report e delivery | 2d | 2026-05-11 | 2026-05-12 | 12 | Dev |
